# ARAquá - Avaliação de Risco Ambiental de Agrotóxico

How a schedule from GanttProject changed from version to version. A marks actual dates.

## Version 1 (saved 2018-10-18)

Note of the change: Diagrama de Gantt Modulo 2 ARAqua

| ID | WBS | Task | Duration | Start | Finish | Complete |
| --- | --- | --- | --- | --- | --- | --- |
| 1 | 1 | **ARAquá modulo 2** | 39d | 2018-10-08 | 2018-12-04 | 11% |
| 2 | 1.1 | **Comunicação** | 33d | 2018-10-08 | 2018-11-26 | 12% |
| 3 |  | Reunião com o Cliente | 1d | 2018-10-08 | 2018-10-08 | 100% |
| 4 |  | Reunião com Equipe de Projetos | 1d | 2018-10-09 | 2018-10-09 | 100% |
| 5 |  | Levantamento Inicial de Requisitos | 4d | 2018-10-09 | 2018-10-15 | 100% |
| 6 |  | Especificação de Requisitos de Software | 3d | 2018-10-10 | 2018-10-15 | 100% |
| 7 |  | Requisitos de Sistema e Não Funcionais | 4d | 2018-10-15 | 2018-10-18 | 100% |
| 8 | 1.1.6 | **Feedback de Versões** | 28d | 2018-10-16 | 2018-11-26 |  |
| 9 |  | Feedback da versão Protótipo | 1d | 2018-10-16 | 2018-10-16 |  |
| 10 |  | Feedback da versão Pré-Alpha | 1d | 2018-10-23 | 2018-10-23 |  |
| 11 |  | Feedback da versão Alpha | 1d | 2018-10-30 | 2018-10-30 |  |
| 12 |  | Feedback da versão Beta | 1d | 2018-11-05 | 2018-11-05 |  |
| 13 |  | Feedback da versão Release Candidate | 1d | 2018-11-12 | 2018-11-12 |  |
| 14 |  | Feedback da versão RTM | 1d | 2018-11-19 | 2018-11-19 |  |
| 15 |  | Feedback da versão GA | 1d | 2018-11-26 | 2018-11-26 |  |
| 16 |  | Incrementos de Requisitos | 29d | 2018-10-15 | 2018-11-26 |  |
| 17 |  | Manual de Software e Documentação | 29d | 2018-10-15 | 2018-11-26 | 20% |
| 18 |  | Treinamento Cliente e Suporte | 29d | 2018-10-15 | 2018-11-26 |  |
| 19 | 1.1.10 | **Revisão Requisitos** | 23d | 2018-10-22 | 2018-11-23 |  |
| 20 |  | Revisão Protótipo | 4d | 2018-10-22 | 2018-10-25 |  |
| 21 |  | Revisão Pré-Alpha | 3d | 2018-10-29 | 2018-10-31 |  |
| 22 |  | Revisão Alpha | 4d | 2018-11-05 | 2018-11-08 |  |
| 23 |  | Revisão Beta | 4d | 2018-11-12 | 2018-11-16 |  |
| 24 |  | Revisão Release Candidate | 1d | 2018-11-19 | 2018-11-19 |  |
| 25 |  | Revisão RTM | 1d | 2018-11-21 | 2018-11-21 |  |
| 26 |  | Revisão GA | 1d | 2018-11-23 | 2018-11-23 |  |
| 27 | 1.2 | **Planejamento** | 35d | 2018-10-09 | 2018-11-29 | 41% |
| 28 | 1.2.1 | **Gerenciamento de Risco** | 33d | 2018-10-09 | 2018-11-27 | 100% |
| 29 |  | Levantamento de Risco | 33d | 2018-10-09 | 2018-11-27 | 100% |
| 30 |  | Revisão do Gerenciamento de Risco | 5d | 2018-10-19 | 2018-10-25 | 100% |
| 31 |  | Supervisão de Atividades das Áreas | 33d | 2018-10-09 | 2018-11-27 | 15% |
| 32 |  | Gestão de Qualidade do Software | 33d | 2018-10-09 | 2018-11-27 | 15% |
| 33 |  | Construção do Cronograma | 1d | 2018-10-10 | 2018-10-10 | 100% |
| 34 | 1.2.5 | **Revisão do Cronograma** | 19d | 2018-10-15 | 2018-11-09 | 15% |
| 35 |  | Acompanhamento Requisitos | 5d | 2018-10-15 | 2018-10-19 | 15% |
| 36 |  | Acompanhamento Modelagem | 5d | 2018-10-22 | 2018-10-26 | 15% |
| 37 |  | Acompanhamento Desenvolvimento | 4d | 2018-10-29 | 2018-11-01 | 15% |
| 38 |  | Acompanhamento Emprego | 5d | 2018-11-05 | 2018-11-09 | 15% |
| 39 |  | Apuração de Custos | 5d | 2018-10-15 | 2018-10-19 | 100% |
| 40 |  | Revisão Documentação e Repositório | 1d | 2018-11-29 | 2018-11-29 | 22% |
| 41 | 1.3 | **Modelagem** | 36d | 2018-10-09 | 2018-11-30 | 3% |
| 42 |  | Definição de Ferramentas e Padrões | 1d | 2018-10-09 | 2018-10-09 | 5% |
| 43 |  | Modelo Entidade Relacionamento | 8d | 2018-10-10 | 2018-10-22 | 5% |
| 44 |  | Diagrama de Caso de Uso | 5d | 2018-10-22 | 2018-10-26 | 5% |
| 45 |  | Diagrama de Atividades | 4d | 2018-11-05 | 2018-11-08 | 5% |
| 46 |  | Diagrama de Sequência | 5d | 2018-11-12 | 2018-11-19 |  |
| 47 |  | Diagrama de Classes | 5d | 2018-11-19 | 2018-11-23 | 5% |
| 48 |  | Revisão Modelos e Diagramas | 5d | 2018-11-26 | 2018-11-30 |  |
| 49 | 1.4 | **Desenvolvimento** | 38d | 2018-10-09 | 2018-12-04 | 3% |
| 50 |  | Design de Telas e Formulários | 33d | 2018-10-09 | 2018-11-27 |  |
| 51 |  | Teste unitário e de integração | 33d | 2018-10-09 | 2018-11-27 |  |
| 52 |  | Design de Experiência de Uso | 33d | 2018-10-09 | 2018-11-27 |  |
| 53 |  | Analise de Regras de Negócio | 23d | 2018-10-10 | 2018-11-13 |  |
| 54 |  | Construção da versão Protótipo | 3d | 2018-10-15 | 2018-10-17 | 10% |
| 55 |  | Modelo Físico | 5d | 2018-10-15 | 2018-10-19 | 10% |
| 56 |  | Construção da versão Pré-Alpha | 4d | 2018-10-16 | 2018-10-19 | 10% |
| 57 |  | Performance e Administração do Banco | 19d | 2018-10-22 | 2018-11-19 | 10% |
| 58 |  | Construção da versão Alpha | 4d | 2018-10-23 | 2018-10-26 | 10% |
| 59 |  | Construção da versão Beta | 3d | 2018-11-05 | 2018-11-07 | 10% |
| 60 |  | Construção da versão Release Candidate | 4d | 2018-11-06 | 2018-11-09 | 10% |
| 61 |  | Revisão Código | 10d | 2018-11-13 | 2018-11-27 | 10% |
| 62 |  | Construção da versão RTM | 3d | 2018-11-20 | 2018-11-22 | 10% |
| 63 |  | Contrução da versão GA | 4d | 2018-11-21 | 2018-11-26 | 10% |
| 64 |  | Rotinas de Backup | 5d | 2018-11-28 | 2018-12-04 |  |
| 65 | 1.5 | **Emprego** | 37d | 2018-10-09 | 2018-12-03 |  |
| 66 |  | Preparação de Ambiente no Cliente | 2d | 2018-10-09 | 2018-10-10 |  |
| 67 |  | Instalação do Banco de Dados | 2d | 2018-10-11 | 2018-10-15 |  |
| 68 |  | Liberação da versão Protótipo | 1d | 2018-10-15 | 2018-10-15 |  |
| 69 |  | Liberação da versão Pré-Alpha | 1d | 2018-10-22 | 2018-10-22 |  |
| 70 |  | Liberação da versão Alpha | 1d | 2018-11-05 | 2018-11-05 |  |

| ID | Task | Duration | Start | Finish | Complete |
| --- | --- | --- | --- | --- | --- |
| 71 | Liberação da versão Beta | 1d | 2018-11-12 | 2018-11-12 |  |
| 72 | Liberação da versão Release Candidate | 1d | 2018-11-19 | 2018-11-19 |  |
| 73 | Liberação da versão RTM | 1d | 2018-11-23 | 2018-11-23 |  |
| 74 | Liberação da versão GA | 1d | 2018-11-30 | 2018-11-30 |  |
| 75 | Homologação e Apresentação | 1d | 2018-12-03 | 2018-12-03 |  |
| 76 | Standby | 1d | 2018-10-08 | 2018-10-08 | 100% |

## Version 2 (saved 2018-10-29)

Note of the change: atualização cronograma

Last finish stays 2018-12-04. Complete tasks 10 → 11.

Changed:

| ID | Task | Duration | Complete |
| --- | --- | --- | --- |
| 1 | **ARAquá modulo 2** |  | 11% → 15% |
| 10 | Feedback da versão Pré-Alpha | 1d → 0d |  |
| 27 | **Planejamento** |  | 41% → 55% |
| 31 | Supervisão de Atividades das Áreas |  | 15% → 30% |
| 32 | Gestão de Qualidade do Software |  | 15% → 45% |
| 34 | **Revisão do Cronograma** |  | 15% → 31% |
| 35 | Acompanhamento Requisitos |  | 15% → 30% |
| 36 | Acompanhamento Modelagem |  | 15% → 45% |
| 37 | Acompanhamento Desenvolvimento |  | 15% → 20% |
| 38 | Acompanhamento Emprego |  | 15% → 30% |
| 41 | **Modelagem** |  | 3% → 7% |
| 42 | Definição de Ferramentas e Padrões |  | 5% → 100% |
| 43 | Modelo Entidade Relacionamento |  | 5% → 10% |

## Version 3 (saved 2018-11-07)

Note of the change: Merge branch 'master' of https://github.com/alessandrojv/ARAqua

Last finish stays 2018-12-04. Complete tasks 11 → 14.

Changed:

| ID | Task | Complete |
| --- | --- | --- |
| 1 | **ARAquá modulo 2** | 15% → 29% |
| 27 | **Planejamento** | 55% → 71% |
| 31 | Supervisão de Atividades das Áreas | 30% → 60% |
| 32 | Gestão de Qualidade do Software | 45% → 60% |
| 34 | **Revisão do Cronograma** | 31% → 54% |
| 35 | Acompanhamento Requisitos | 30% → 90% |
| 36 | Acompanhamento Modelagem | 45% → 70% |
| 40 | Revisão Documentação e Repositório | 22% → 50% |
| 41 | **Modelagem** | 7% → 64% |
| 43 | Modelo Entidade Relacionamento | 10% → 100% |
| 45 | Diagrama de Atividades | 5% → 100% |
| 47 | Diagrama de Classes | 5% → 100% |
| 48 | Revisão Modelos e Diagramas | 0% → 60% |

## Version 4 (saved 2018-11-12)

Note of the change: cronograma att 12/11

Last finish stays 2018-12-04. Complete tasks 14 → 17.

Changed:

| ID | Task | Complete |
| --- | --- | --- |
| 1 | **ARAquá modulo 2** | 29% → 40% |
| 41 | **Modelagem** | 64% → 78% |
| 44 | Diagrama de Caso de Uso | 5% → 100% |
| 49 | **Desenvolvimento** | 3% → 40% |
| 50 | Design de Telas e Formulários | 0% → 100% |
| 52 | Design de Experiência de Uso | 0% → 100% |
| 55 | Modelo Físico | 10% → 80% |
